# Проект ВА

Schedule from MS Project, 2025-05-05 to 2025-07-17, status date 2025-06-20, costs in ₽.

## Calendars

- Стандартный: Mon-Fri 09:00-13:00, 14:00-18:00; Sat-Sun off. Exceptions (off unless hours are given): 2025-05-08 to 2025-05-11 (9 мая праздник), 2025-06-12 to 2025-06-15 (день россии).

## Resources

| Resource | Rate |
| --- | --- |
| Сервисный инженер | 1000 |
| Сборщик | 350 |
| Логист | 350 |
| Менеджер по продажам | 1250 |
| Монтажник | 3000 |
| Терминал | 10000 |
| Камера | 5000 |
| Динамик | 2500 |
| Сотрудник Техподдержки |  |

## Schedule

| ID | WBS | Task | Type | Duration | Start | Finish | Predecessors | Total slack | Resources | Work | Cost |
| --- | --- | --- | --- | --- | --- | --- | --- | --- | --- | --- | --- |
| 1 | 1 | **Внедрение оборудования GPS** |  | 50d | 2025-05-05 | 2025-07-17 |  | 0d |  | 432h | 1,553,100 |
| 2 | 1.1 | **Изучение нового оборудования** |  | 11d | 2025-05-05 | 2025-05-21 |  | 0d |  | 80h | 97,500 |
| 3 | 1.1.1 | Изучение каталога поставщика |  | 2d | 2025-05-05 | 2025-05-06 |  | 0d | Сервисный инженер | 16h | 16,000 |
| 4 | 1.1.2 | Выявление актуальных типов оборудования |  | 1d | 2025-05-07 | 2025-05-07 | 3 | 0d | Сервисный инженер | 8h | 8,000 |
| 5 | 1.1.3 | Заказ оборудования для тестов |  | 1d | 2025-05-12 | 2025-05-12 | 4 | 0d | Камера; Динамик; Терминал |  | 17,500 |
| 6 | 1.1.4 | Проведение тестов оборудоваия |  | 4d | 2025-05-13 | 2025-05-16 | 5 | 0d | Сервисный инженер | 32h | 32,000 |
| 7 | 1.1.5 | Обкатка пробного комплекта |  | 3d | 2025-05-19 | 2025-05-21 | 6 | 0d | Сервисный инженер | 24h | 24,000 |
| 8 | 1.2 | Завершение первого этапа | milestone | 0d | 2025-05-21 | 2025-05-21 | 2 | 0d |  |  |  |
| 9 | 1.3 | **Работа с клиентом** |  | 5d | 2025-05-22 | 2025-05-28 | 8 | 0d |  | 40h | 49,000 |
| 10 | 1.3.1 | Выявление потребностей клиента |  | 3d | 2025-05-22 | 2025-05-26 |  | 0d | Менеджер по продажам | 24h | 30,000 |
| 11 | 1.3.2 | Подбор комплекта оборудования, соответствующего потребностям клиента |  | 1d | 2025-05-27 | 2025-05-27 | 10 | 0d | Менеджер по продажам [50%]; Сервисный инженер [50%] | 8h | 9,000 |
| 12 | 1.3.3 | Согласование и подписание договора |  | 1d | 2025-05-28 | 2025-05-28 | 10, 11 | 0d | Менеджер по продажам | 8h | 10,000 |
| 13 | 1.4 | Завершение второго этапа | milestone | 0d | 2025-05-28 | 2025-05-28 | 9 | 0d |  |  |  |
| 14 | 1.5 | **Процесс предварительной настройки** |  | 17d | 2025-05-29 | 2025-06-24 | 13 | 0d |  | 176h | 1,217,800 |
| 15 | 1.5.1 | Заказ оборудования у производителя |  | 1d | 2025-05-29 | 2025-05-29 |  | 0d | Логист; Камера [10000%]; Терминал [5000%]; Динамик [5000%] | 8h | 1,127,800 |
| 16 | 1.5.2 | Приём оборудования на склад |  | 1d | 2025-05-30 | 2025-05-30 | 15 | 0d | Логист | 8h | 2,800 |
| 17 | 1.5.3 | Отгрузка оборудования на преднастройку |  | 1d | 2025-06-02 | 2025-06-02 | 16 | 0d | Логист | 8h | 2,800 |
| 18 | 1.5.4 | Сборка комплектов |  | 1d | 2025-06-03 | 2025-06-03 | 17 | 0d | Сборщик | 8h | 2,800 |
| 19 | 1.5.5 | Выявление внешних дефектов |  | 1d | 2025-06-04 | 2025-06-04 | 18 | 0d | Сборщик | 8h | 2,800 |
| 20 | 1.5.6 | Проведение предварительной настройки |  | 5d | 2025-06-05 | 2025-06-11 | 19 | 0d | Сборщик | 40h | 14,000 |
| 21 | 1.5.7 | Выявление программных деффектов |  | 5d | 2025-06-16 | 2025-06-20 | 20 | 0d | Сборщик | 40h | 14,000 |
| 22 | 1.5.8 | Диагностика нерабочих комплектов |  | 5d | 2025-06-16 | 2025-06-20 | 20 | 0d | Сервисный инженер | 40h | 40,000 |
| 23 | 1.5.9 | Проведение контроля качества настроеных комплектов |  | 1d | 2025-06-23 | 2025-06-23 | 21, 22 | 0d | Сервисный инженер | 8h | 8,000 |
| 24 | 1.5.10 | Отгрузка готовых комплектов на склад |  | 1d | 2025-06-24 | 2025-06-24 | 23 | 0d | Логист | 8h | 2,800 |
| 25 | 1.6 | Завершение третьего этапа | milestone | 0d | 2025-06-24 | 2025-06-24 | 14 | 0d |  |  |  |

| ID | WBS | Task | Type | Duration | Start | Finish | Predecessors | Total slack | Resources | Work | Cost |
| --- | --- | --- | --- | --- | --- | --- | --- | --- | --- | --- | --- |
| 26 | 1.7 | **Процесс монтажа** |  | 17d | 2025-06-25 | 2025-07-17 | 25 | 0d |  | 136h | 188,800 |
| 27 | 1.7.1 | Написание интсрукции по монтажу на ТС |  | 1d | 2025-06-25 | 2025-06-25 |  | 0d | Сервисный инженер | 8h | 8,000 |
| 28 | 1.7.2 | Отправка комплектов монтажнику |  | 1d | 2025-06-26 | 2025-06-26 | 27 | 0d | Логист | 8h | 2,800 |
| 29 | 1.7.3 | Проведение монтажа |  | 7d | 2025-06-27 | 2025-07-07 | 28 | 0d | Монтажник | 56h | 168,000 |
| 30 | 1.7.4 | Проведение онлайн-проверки |  | 7d | 2025-07-08 | 2025-07-16 | 29 | 0d | Сотрудник Техподдержки | 56h |  |
| 31 | 1.7.5 | Сбор обратной связи от клиента |  | 1d | 2025-07-17 | 2025-07-17 | 30 | 0d | Менеджер по продажам | 8h | 10,000 |
| 32 | 1.8 | Завершение четвертого этапа | milestone | 0d | 2025-07-17 | 2025-07-17 | 26 | 0d |  |  |  |
